# Cro_Pais2

Schedule from MS Project, 2010-04-12 to 2010-08-06, A marks actual dates.

## Calendars

- Padrão: Mon-Fri 09:00-12:00, 13:00-18:00; Sat-Sun off.

## Resources

| Resource | Group |
| --- | --- |
| Manfrine | Desenvolvimento |
| Manoel | Análise |
| Laerto | Design/Gerente |
| Manfrine e Manoel |  |
| Laerton |  |

## Schedule

| ID | WBS | Task | Duration | Start | Finish | Predecessors | Complete | Remaining | Total slack | Free slack | Constraint | Resources | Work | Actual work |
| --- | --- | --- | --- | --- | --- | --- | --- | --- | --- | --- | --- | --- | --- | --- |
| 1 | 1 | **PAIS** | 85d | 2010-04-12 A | 2010-08-06 |  | 12% | 74.55d | 0d |  |  |  | 363h | 91h |
| 2 | 1.1 | **Início** | 85d | 2010-04-12 A | 2010-08-06 |  | 12% | 74.55d | 0d |  |  |  | 363h | 91h |
| 3 | 1.1.1 | **Modulo Árvore Genealógica** | 53d | 2010-04-12 A | 2010-06-23 |  | 18% | 43.66d | 32d |  |  |  | 239h | 91h |
| 4 | 1.1.1.1 | **Análise** | 8d | 2010-04-12 A | 2010-04-21 |  | 59% | 3.29d | 77d |  |  |  | 84h | 48h |
| 5 | 1.1.1.1.1 | Descrição do Sistema | 3d | 2010-04-12 A | 2010-04-14 A |  | 100% |  |  |  | finish no earlier than 2010-04-14 | Manfrine | 24h | 24h |
| 6 | 1.1.1.1.2 | Definição de Nomeclaturas | 2d | 2010-04-15 A | 2010-04-16 A | 5 | 100% |  |  |  |  |  |  |  |
| 7 | 1.1.1.1.3 | Modelagem do Banco (Analise) | 3d | 2010-04-13 A | 2010-04-15 A | 6 | 100% |  |  |  | start no earlier than 2010-04-13 | Manfrine e Manoel | 24h | 24h |
| 8 | 1.1.1.1.4 | **Caso de Uso** | 5d | 2010-04-15 A | 2010-04-21 |  | 46% | 2.7d | 77d |  |  |  |  |  |
| 9 | 1.1.1.1.4.1 | Modelagem | 2d | 2010-04-15 A | 2010-04-16 A | 5 | 100% |  |  |  | finish no earlier than 2010-04-13 |  |  |  |
| 10 | 1.1.1.1.4.2 | descrição | 3d | 2010-04-19 A | 2010-04-21 | 9 | 10% | 2.7d | 77d |  |  |  |  |  |
| 11 | 1.1.1.1.5 | Diagrama de Atividades | 2d | 2010-04-15 | 2010-04-16 | 5 |  |  | 80d |  | finish no earlier than 2010-04-16 | Manfrine | 16h |  |
| 12 | 1.1.1.1.6 | Diagrama de Estatus | 2d | 2010-04-15 | 2010-04-16 | 5 |  |  | 79.5d | 0d | finish no earlier than 2010-04-16 | Manfrine | 16h |  |
| 13 | 1.1.1.1.7 | Validação | 4h | 2010-04-19 | 2010-04-19 | 12 |  |  | 79.5d |  | finish no earlier than 2010-04-16 | Laerton | 4h |  |
| 14 | 1.1.1.2 | **Projeto** | 53d | 2010-04-12 A | 2010-06-23 |  | 9% | 48.48d | 32d |  |  |  | 155h | 43h |
| 15 | 1.1.1.2.1 | Definição da Arquitetura do Sistema | 1h | 2010-04-12 A | 2010-04-12 A |  | 100% |  |  |  | start no earlier than 2010-04-12 | Manoel | 1h | 1h |
| 16 | 1.1.1.2.2 | Definição da Linguagem | 1h | 2010-04-16 A | 2010-04-16 A |  | 100% |  |  |  | finish no earlier than 2010-04-16 | Manoel | 1h | 1h |
| 17 | 1.1.1.2.3 | Definição do banco | 1h | 2010-04-16 A | 2010-04-16 A |  | 100% |  |  |  | finish no earlier than 2010-04-16 | Manoel | 1h | 1h |
| 18 | 1.1.1.2.4 | **Projeto de Banco** | 10d | 2010-04-12 A | 2010-04-23 |  | 50% | 5d | 75d |  |  |  | 80h | 40h |
| 19 | 1.1.1.2.4.1 | Dicionário de Dados | 5d | 2010-04-19 | 2010-04-23 |  |  |  | 75d |  | finish no earlier than 2010-04-23 | Manfrine | 40h |  |
| 20 | 1.1.1.2.4.2 | Modelagem de Projeto (WorkBanq) | 5d | 2010-04-12 A | 2010-04-16 A |  | 100% |  |  |  |  | Manfrine e Manoel | 40h | 40h |
| 21 | 1.1.1.2.5 | Layout | 5d | 2010-05-03 | 2010-05-07 |  |  |  | 65d |  | start no earlier than 2010-05-03 | Laerton | 40h |  |
| 22 | 1.1.1.2.6 | Montar a Arquitetura do Sistema | 4d | 2010-04-19 | 2010-04-22 |  |  |  | 76d |  | start no earlier than 2010-04-19 | Manoel | 32h |  |
| 23 | 1.1.1.2.7 | **Implementação** | 25d | 2010-04-26 | 2010-05-28 |  |  |  | 50d |  |  |  |  |  |
| 24 | 1.1.1.2.7.1 | Casos de Uso (Add todas as funcionalidades) | 25d | 2010-04-26 | 2010-05-28 |  |  |  | 50d |  | finish no earlier than 2010-05-28 |  |  |  |
| 25 | 1.1.1.2.8 | Casos de Testes | 4d | 2010-05-12 | 2010-05-17 |  |  |  | 59d |  | start no earlier than 2010-05-12 |  |  |  |
| 26 | 1.1.1.2.9 | Implantação | 3d | 2010-06-21 | 2010-06-23 |  |  |  | 32d |  | finish no earlier than 2010-06-23 |  |  |  |
| 27 | 1.1.1.2.10 | Documentação do Sistema | 28d | 2010-05-07 A | 2010-06-15 |  | 5% | 26.6d | 38d |  | start no earlier than 2010-05-07 |  |  |  |

Notes:
- 17: MySQL

| ID | WBS | Task | Type | Duration | Start | Finish | Predecessors | Complete | Remaining | Total slack | Free slack | Constraint | Resources | Work |
| --- | --- | --- | --- | --- | --- | --- | --- | --- | --- | --- | --- | --- | --- | --- |
| 28 | 1.1.2 | **Modulo Mover Urbano** |  | 23.5d | 2010-07-01 A | 2010-08-03 |  | 1% | 23.34d | 3.5d |  |  |  | 124h |
| 29 | 1.1.2.1 | **Análise** |  | 6.7d | 2010-07-01 A | 2010-07-09 |  | 2% | 6.54d | 20.3d |  |  |  | 52h |
| 30 | 1.1.2.1.1 | Descrição do Sistema |  | 2d | 2010-07-01 | 2010-07-02 |  |  |  | 3.5d | 0d | start no earlier than 2010-07-01 | Manfrine | 16h |
| 31 | 1.1.2.1.2 | Definição de Nomeclaturas |  | 1d | 2010-07-05 | 2010-07-05 | 30 |  |  | 22d | 0d |  |  |  |
| 32 | 1.1.2.1.3 | Modelagem do Banco (Analise) |  | 2d | 2010-07-06 | 2010-07-07 | 31 |  |  | 22d |  | start no earlier than 2010-04-13 | Manfrine e Manoel | 16h |
| 33 | 1.1.2.1.4 | **Caso de Uso** |  | 6.7d | 2010-07-01 A | 2010-07-09 |  | 6% | 6.3d | 20.3d |  |  |  |  |
| 34 | 1.1.2.1.4.1 | Modelagem |  | 2d | 2010-07-05 | 2010-07-06 | 30 |  |  | 20.3d | 0d | finish no earlier than 2010-04-13 |  |  |
| 35 | 1.1.2.1.4.2 | descrição |  | 3d | 2010-07-01 A | 2010-07-09 | 34 | 10% | 2.7d | 20.3d |  |  |  |  |
| 36 | 1.1.2.1.5 | Diagrama de Atividades |  | 1d | 2010-07-05 | 2010-07-05 | 30 |  |  | 24d |  | finish no earlier than 2010-04-16 | Manfrine | 8h |
| 37 | 1.1.2.1.6 | Diagrama de Estatus |  | 1d | 2010-07-05 | 2010-07-05 | 30 |  |  | 3.5d | 0d | finish no earlier than 2010-04-16 | Manfrine | 8h |
| 38 | 1.1.2.1.7 | Validação |  | 4h | 2010-07-06 | 2010-07-06 | 37 |  |  | 3.5d | 0d | finish no earlier than 2010-04-16 | Laerto | 4h |
| 39 | 1.1.2.2 | **Projeto** |  | 20d | 2010-07-06 | 2010-08-03 |  |  |  | 3.5d |  |  |  | 72h |
| 40 | 1.1.2.2.1 | **Projeto de Banco** |  | 2d | 2010-07-06 | 2010-07-08 |  |  |  | 21.5d |  |  |  | 32h |
| 41 | 1.1.2.2.1.1 | Dicionário de Dados |  | 2d | 2010-07-06 | 2010-07-08 | 38 |  |  | 21.5d |  | finish no earlier than 2010-04-23 | Manfrine | 16h |
| 42 | 1.1.2.2.1.2 | Modelagem de Projeto (WorkBanq) |  | 2d | 2010-07-06 | 2010-07-08 | 38 |  |  | 21.5d |  |  | Manfrine e Manoel | 16h |
| 43 | 1.1.2.2.2 | Layout |  | 5d | 2010-07-06 | 2010-07-13 | 38 |  |  | 18.5d |  | start no earlier than 2010-05-03 | Laerto | 40h |
| 44 | 1.1.2.2.3 | **Implementação** |  | 15d | 2010-07-06 | 2010-07-27 |  |  |  | 3.5d |  |  |  |  |
| 45 | 1.1.2.2.3.1 | Casos de Uso (Add todas as funcionalidades) |  | 15d | 2010-07-06 | 2010-07-27 | 38 |  |  | 3.5d | 0d | finish no earlier than 2010-05-28 |  |  |
| 46 | 1.1.2.2.4 | Casos de Testes |  | 2d | 2010-07-27 | 2010-07-29 | 45 |  |  | 5.5d | 0d | start no earlier than 2010-05-12 |  |  |
| 47 | 1.1.2.2.5 | Implantação |  | 1d | 2010-07-29 | 2010-07-30 | 46 |  |  | 5.5d |  | finish no earlier than 2010-06-23 |  |  |
| 48 | 1.1.2.2.6 | Documentação do Sistema |  | 5d | 2010-07-27 | 2010-08-03 | 45 |  |  | 3.5d |  | start no earlier than 2010-05-07 |  |  |
| 50 | 1.1.3 | fim | milestone | 0d | 2010-08-06 | 2010-08-06 |  |  |  | 0d |  | finish no earlier than 2010-08-06 |  |  |
